# CHAOBAN_project

Schedule from MS Project, 2009-08-24 to 2010-01-14, A marks actual dates.
SiS

## Calendars

- 標準: Mon-Fri 08:00-12:00, 13:00-17:00; Sat-Sun off.

## Resources

| Resource |
| --- |
| Android |
| ARM |
| Driver |
| ARM Android |
| X86 Android |
| Beagleboard |
| Linux |
| X86 |
| Enable I2C-2 port of HW setting |

## Schedule

| ID | WBS | Task | Duration | Start | Finish | Predecessors | Complete | Remaining | Total slack | Free slack | Constraint | Resources | Work | Actual work |
| --- | --- | --- | --- | --- | --- | --- | --- | --- | --- | --- | --- | --- | --- | --- |
| 1 | 1 | Porting Android to AT2440 | 35d | 2009-08-24 A | 2009-10-09 A |  | 100% |  |  |  | finish no earlier than 2009-10-09 | Android; ARM | 560h | 560h |
| 2 | 2 | Test Android in Beagleboard | 5d | 2009-10-12 A | 2009-10-16 A | 1 | 100% |  |  |  | finish no earlier than 2009-10-16 | Android; ARM; Beagleboard | 120h | 120h |
| 3 | 3 | EABI, Math and Floating library in ARM | 4d | 2009-10-19 A | 2009-10-22 A |  | 100% |  |  |  | finish no earlier than 2009-10-22 | ARM | 32h | 32h |
| 4 | 4 | Linux I2C driver | 9.8d | 2009-10-26 A | 2009-11-06 |  | 70% | 2.94d | 14.2d | 0d | finish no earlier than 2009-11-04 | Driver; ARM; X86 | 107.2h | 83.68h |
| 5 | 5 | X86 Touchscreen solution | 13d | 2009-11-02 A | 2009-11-18 | 4 | 92% | 1d | 41d |  | finish no earlier than 2009-11-18 | X86; Driver | 208h | 192h |
| 6 | 6 | **ARM Touchscreen Solution by I2C** | 18d? | 2009-11-18 | 2009-12-11 | 2, 3, 4 |  |  | 24d |  |  | Driver; Beagleboard | 288h | 32h |
| 7 | 6.1 | 1. Porting sis touch screen to Beagleboard that adapted in i2c bus. | 2d | 2009-11-18 | 2009-11-19 |  |  |  | 8d |  | start no earlier than 2009-11-18 |  |  |  |
| 8 | 6.2 | 2. Add I2C Port-2 in expansion connector. | 2d | 2009-11-19 | 2009-11-20 |  |  |  | 39d |  | start no earlier than 2009-11-19 |  |  |  |
| 9 | 6.3 | 3. Implement I2C bus driver for port-2 to adapte the synaptics driver | 3d | 2009-11-23 | 2009-11-25 |  |  |  | 36d |  | finish no earlier than 2009-11-25 |  |  |  |
| 10 | 6.4 | **4. Check I2C Controller timeout issue** | 6d? | 2009-11-26 | 2009-12-03 |  |  |  | 30d |  |  |  |  |  |
| 11 | 6.4.1 | Enable I2C-2 port of HW setting | 2d? | 2009-11-26 | 2009-11-27 |  |  |  | 34d |  | finish no earlier than 2009-11-27 |  |  |  |
| 12 | 6.4.2 | Patch MUX in kernel | 3d? | 2009-11-30 | 2009-12-02 |  |  |  | 31d |  | finish no earlier than 2009-12-02 |  |  |  |
| 13 | 6.4.3 | Update bootloader to fix I2C bugs | 3d? | 2009-12-01 | 2009-12-03 |  |  |  | 30d |  | finish no earlier than 2009-12-03 |  |  |  |
| 14 | 6.4.4 | Check Beagleboard / OMAP3530 specification about IO voltage | 1d? | 2009-12-02 | 2009-12-02 |  |  |  | 7d |  | start no earlier than 2009-12-02 |  |  |  |
| 15 | 6.5 | 5. Debug read data from I2C. | 5d | 2009-12-07 | 2009-12-11 |  |  |  | 24d |  | start no earlier than 2009-12-07 |  |  |  |
| 16 | 7 | **ARM Touchscreen Solution by USB** | 18d? | 2009-12-08 | 2009-12-31 |  |  |  | 10d |  |  |  |  |  |
| 17 | 7.1 | Megred Usb touchscreen (mousedev) to Android Donut | 2d? | 2009-12-08 | 2009-12-09 |  |  |  | 26d |  | start no earlier than 2009-12-08 |  |  |  |
| 18 | 7.2 | Merged Usb touchscreen to Android Éclair | 2d? | 2009-12-30 | 2009-12-31 |  |  |  | 10d |  | start no earlier than 2009-12-30 |  |  |  |
| 19 | 8 | **Ubuntu Touchscreen Soultion** | 19d? | 2009-12-14 | 2010-01-07 |  |  |  | 5d |  |  |  |  |  |
| 20 | 8.1 | Merged Usb touchscreen (mousedev) in Ubuntu 9.10 | 5d? | 2009-12-14 | 2009-12-18 |  |  |  | 19d |  | start no earlier than 2009-12-14 |  |  |  |
| 21 | 8.2 | Merged Usb touchscreen in Ubuntu 9.10 | 2d? | 2009-12-28 | 2009-12-29 |  |  |  | 12d |  | finish no earlier than 2009-12-29 |  |  |  |
| 22 | 8.3 | **Merged I2C touchscreen in Ubuntu 9.10** | 4d? | 2010-01-04 | 2010-01-07 |  |  |  | 5d |  |  |  |  |  |
| 23 | 8.3.1 | Debug X-server crash | 4d? | 2010-01-04 | 2010-01-07 |  |  |  | 5d |  | start no earlier than 2010-01-04 |  |  |  |
| 24 | 9 | Ubuntu Touchscreen in ARMv7 | 6d? | 2010-01-07 | 2010-01-14 |  |  |  | 0d |  | start no earlier than 2010-01-07 |  |  |  |

Notes:
- 1: Android do not supported in ARM V4.
- 7: 1. Read block data from i2c, not i2c_smbus.
- 8: 1. Check HW spec about i2c port-2, and AE team helps to connect the header.
- 9: 1. Legacy style, and new-style driver. / 2. Can not dynamic link device driver to client. / 3. Fixed link synaptics driver to i2c bus-2.
- 10: 1. I2C commands set to i2c controller are failure. / 2. I2C clock always pull hing. / 3. Maybe i2c bus-2 issue, or device issue.
- 11: archomap2omap3beagle.c
- 12: archomap.h / archomap.c
- 13: U-BOOT version after Feb. 2009
- 14: OMAP 3530 IO is 1.8v. / General PC/I2C device is 3.3v.
- 15: 1. DATA format issue.
